# Word Tur-01

Schedule from MS Project, 2016-05-02 to 2016-10-14, costs in $.
Hewlett-Packard Company

## Calendars

- Estándar: Mon-Fri 09:00-13:00, 15:00-19:00; Sat-Sun off. Exceptions (off unless hours are given): 2016-05-05 (Día de descanso Obligatorio), 2016-05-10 (Dia de las madres), 2016-05-13 (Día del maestro), 2016-07-04 (Día de descanso Obligatorio), 2016-07-18 to 2016-07-29 (Vacaciones).

## Resources

| Resource | Rate |
| --- | --- |
| Diseñador | 92.64 |
| Administrador de Proyectos | 163.93 |
| Tester | 109.38 |
| Analista | 118.4 |
| Programador | 104 |
| Asegurador de la Calidad | 106.54 |
| Administrador de la Configuración | 108.05 |
| Líder | 243.7 |

## Schedule

| ID | WBS | Task | Type | Duration | Start | Finish | Predecessors | Total slack | Free slack | Constraint | Resources | Work | Cost |
| --- | --- | --- | --- | --- | --- | --- | --- | --- | --- | --- | --- | --- | --- |
| 1 | 1 | **Plan preliminar** |  | 1.75d | 2016-05-02 09:00 | 2016-05-03 17:00 |  | 0.75d |  |  |  | 14h | 3,332.03 |
| 2 | 1.1 | Generar WBS del producto inicial |  | 4h | 2016-05-02 09:00 | 2016-05-02 13:00 |  | 0.75d | 0d |  | Líder | 4h | 974.8 |
| 3 | 1.2 | Generar Project Charter |  | 1h | 2016-05-02 15:00 | 2016-05-02 16:00 | 2 | 0.75d | 0d |  | Líder | 1h | 243.7 |
| 4 | 1.3 | Plan preliminar del proyecto |  | 8h | 2016-05-02 16:00 | 2016-05-03 16:00 | 3 | 0.75d | 0d |  | Líder | 8h | 1,949.6 |
| 5 | 1.4 | Matriz de comunicación |  | 1h | 2016-05-03 16:00 | 2016-05-03 17:00 | 4 | 0.75d | 0d |  | Administrador de Proyectos | 1h | 163.93 |
| 6 | 1.5 | Entrega del WBS del producto inicial, Project Charter, Plan preliminar, matriz de comunicación | milestone | 0d | 2016-05-03 09:00 | 2016-05-03 09:00 |  | 105d |  | start no earlier than 2016-05-03 09:00 |  |  |  |
| 7 | 2 | **Nombre de proyecto** |  | 106d | 2016-05-02 09:00 | 2016-10-14 19:00 |  | 0d |  |  |  | 666.5h | 94,556.24 |
| 8 | 2.1 | Formación del equipo |  | 1h | 2016-05-03 17:00 | 2016-05-03 18:00 | 5 | 0.75d | 0d |  | Líder | 1h | 243.7 |
| 9 | 2.2 | **Construcción** |  | 106d | 2016-05-02 09:00 | 2016-10-14 19:00 |  | 0d |  |  |  | 665.5h | 94,312.54 |
| 10 | 2.2.1 | **Fase Uno/Iteracion uno** |  | 106d | 2016-05-02 09:00 | 2016-10-14 19:00 |  | 0d |  |  |  | 665.5h | 94,312.54 |
| 11 | 2.2.1.1 | **Analisis** |  | 4.69d | 2016-05-03 18:00 | 2016-05-12 15:30 |  | 0.75d |  |  |  | 39h | 4,591.03 |
| 12 | 2.2.1.1.1 | **Elicitación** |  | 3.12d | 2016-05-03 18:00 | 2016-05-09 19:00 |  | 0.75d |  |  |  | 25h | 2,877.2 |
| 13 | 2.2.1.1.1.1 | Generar lista de proveedores |  | 2h | 2016-05-03 18:00 | 2016-05-04 10:00 | 8 | 0.75d | 0d |  | Analista | 2h | 236.8 |
| 14 | 2.2.1.1.1.2 | Evaluar proveedores de requerimientos |  | 1h | 2016-05-04 10:00 | 2016-05-04 11:00 | 13 | 0.75d | 0d |  | Analista | 1h | 118.4 |
| 15 | 2.2.1.1.1.3 | Definir estrategia de recoleccion de datos |  | 0.5h | 2016-05-04 11:00 | 2016-05-04 11:30 | 14 | 0.75d | 0d |  | Analista | 0.5h | 59.2 |
| 16 | 2.2.1.1.1.4 | Planificacion de reuniones de licitacion |  | 1.5h | 2016-05-04 11:30 | 2016-05-04 13:00 | 15 | 0.75d | 0d |  | Analista | 1.5h | 177.6 |
| 17 | 2.2.1.1.1.5 | Identificar procesos del sistema |  | 8h | 2016-05-04 15:00 | 2016-05-06 13:00 | 16 | 0.75d | 0d |  | Administrador de la Configuración | 8h | 864.4 |
| 18 | 2.2.1.1.1.6 | Identificar requerimientos funcionales |  | 8h | 2016-05-06 15:00 | 2016-05-09 13:00 | 17 | 0.75d | 0d |  | Analista | 8h | 947.2 |
| 19 | 2.2.1.1.1.7 | Identificar requerimientos no funcionales |  | 4h | 2016-05-09 15:00 | 2016-05-09 19:00 | 18 | 0.75d | 0d |  | Analista | 4h | 473.6 |
| 20 | 2.2.1.1.2 | **Especificación** |  | 2d | 2016-05-10 09:00 | 2016-05-11 19:00 |  |  |  |  |  | 8h | 923.48 |
| 21 | 2.2.1.1.2.1 | Evaluacion de requerimientos |  | 2h | 2016-05-11 09:00 | 2016-05-11 11:00 | 19 | 0.75d | 0d |  | Asegurador de la Calidad | 2h | 213.08 |
| 22 | 2.2.1.1.2.2 | SRS |  | 6h | 2016-05-11 11:00 | 2016-05-11 19:00 | 21 | 3d | 0d | finish no earlier than 2016-05-11 19:00 | Analista | 6h | 710.4 |
| 23 | 2.2.1.1.3 | **Gestión de requerimientos** |  | 0.56d | 2016-05-12 09:00 | 2016-05-12 15:30 |  | 3d |  |  |  | 6h | 790.36 |
| 24 | 2.2.1.1.3.1 | Priorizar los requerimientos |  | 2h | 2016-05-12 09:00 | 2016-05-12 11:00 | 22 | 3d | 0d |  | Analista | 2h | 236.8 |
| 25 | 2.2.1.1.3.2 | Almacenar en repositorio |  | 0.5h | 2016-05-12 11:00 | 2016-05-12 11:30 | 24 | 3d | 0d |  | Administrador de Proyectos | 0.5h | 81.97 |
| 26 | 2.2.1.1.3.3 | Asignar a desarrolladores de software |  | 1h | 2016-05-12 11:30 | 2016-05-12 12:30 | 25 | 3d | 0d |  | Administrador de Proyectos | 1h | 163.93 |
| 27 | 2.2.1.1.3.4 | Administración de cambios de requerimientos |  | 0.5h | 2016-05-12 12:30 | 2016-05-12 13:00 | 26 | 3d | 0d |  | Administrador de Proyectos; Analista; Asegurador de la Calidad; Administrador de la Configuración | 2h | 248.46 |
| 28 | 2.2.1.1.3.5 | Administración de la trazabilidad de requerimientos |  | 0.5h | 2016-05-12 15:00 | 2016-05-12 15:30 | 27 | 3d | 0d |  | Analista | 0.5h | 59.2 |
| 29 | 2.2.1.1.3.6 | Entrega lista de proveedores de requerimientos, Planificación de reuniones de licitacion, SRS | milestone | 0d | 2016-05-12 09:00 | 2016-05-12 09:00 |  | 100d |  | start no earlier than 2016-05-12 09:00 |  |  |  |

Notes:
- 2: Definir actividades que se realizaran durante la ejecucion del proyecto, establecer duracion, fechas de inicio, fechas de fin, costos, recursos, actividades sucesoras y predecesoras, hitos, revisiones
- 3: Una herramienta crucial para el desarrollo de toda actividad es el Project Charter o Acta de Constitución de Proyecto, en la cual se detallan cada uno de los aspectos fundamentales y cruciales de todo Proyecto, es aquí donde delimitamos nuestro alcance, definimos los objetivos, establecemos los entregables, definimos las posiciones (Stakeholder, Clientes), asignamos responsabilidades, definimos los planes (Financieros, Recursos, Calidad)y las consideraciones (Riesgos, asunciones, restricciones).
- 4: Identificación de las necesidades del sistema en cuanto a procesos, / datos, limitaciones, infraestructuras, presupuesto, Definición de los requerimientos.
- 5: Es una herramienta de evaluación diseñada para determinar con exactitud cómo se comunica un individuo y para proporcionar un marco conceptual para determinar objetivos de comunicación lógicos.
- 8: Aquí se establecen las personas que estarán involucradas en la creación del proyecto
- 12: Durante esta etapa se lleva a cabo la recaudación de datos necesarios en los requerimientos, esto con ayuda de un método eficiente para su recolección como lo es una encuesta aplicada.
- 13: Se genera una lista de proveedores que se van a utilizar durante el proyecto.
- 14: El objetivo es evaluar los proveedores a entrevistar y aportar información más detallada sobre el entorno operacional de la empresa.
- 15: Definir una estrategia acorde a nuestros acuerdos entre los involucrados.
- 16: Se necesita conocer las necesidades de la organización durante el proyecto para asignar las reuniones.
- 17: Se necesita conocer las actividades así como las personas que intervienen en ellas.
- 18: Se describe todo lo que realizará nuestro sitio, es decir se especificará todo lo que el sitio tiene que hacer.
- 19: Se necesita conocer los requerimientos del sistema como la fiabilidad, portabilidad, así como la interfaz del usuario.
- 20: Actividad donde se llevan a cabo los procesos de evaluación de requerimientos y descripción, esto para determinar si nos serán funcionales.
- 21: Evaluar cada uno de los requerimientos y que sean los indicados para la elaboración del proyecto.
- 22: Especificación de requerimientos del software
- 23: Aquí se hace una priorización de los requerimientos por su grado de importancia así como administrar los cambios en los mismos.
- 24: Aquí se hace una priorización de los requerimientos por su grado de importancia así como administrar los cambios en los mismos.
- 25: Es una herramienta en linea donde se podran almacenar todos los documentos generados en el proyecto
- 26: Se asigna a cada uno de los involucrados los requerimientos para el desarrollo de software.
- 27: Se realiza la administración de cada uno de los cambios realizados a lo largo del proyecto.
- 28: Identifica la relación entre los procesos y elementos del sistema y realiza un seguimiento del estado de los requerimientos.

| ID | WBS | Task | Type | Duration | Start | Finish | Predecessors | Total slack | Free slack | Resources | Work | Cost |
| --- | --- | --- | --- | --- | --- | --- | --- | --- | --- | --- | --- | --- |
| 30 | 2.2.1.2 | **Planificación** |  | 8.69d | 2016-05-12 09:00 | 2016-05-25 16:30 |  |  |  |  | 39h | 6,520.22 |
| 31 | 2.2.1.2.1 | Definición del ciclo de vida |  | 0.5h | 2016-05-12 15:30 | 2016-05-12 16:00 | 28 | 3d | 0d | Administrador de Proyectos | 0.5h | 81.97 |
| 32 | 2.2.1.2.2 | Definición de politicas |  | 0.5h | 2016-05-12 16:00 | 2016-05-12 16:30 | 31 | 3d | 0d | Administrador de Proyectos | 0.5h | 81.97 |
| 33 | 2.2.1.2.3 | Actualizar plan de proyecto |  | 2h | 2016-05-12 16:30 | 2016-05-12 18:30 | 32 | 3d | 0d | Administrador de Proyectos | 2h | 327.86 |
| 34 | 2.2.1.2.4 | Actualizar matriz de comunicación |  | 1h | 2016-05-12 18:30 | 2016-05-16 09:30 | 33 | 3d | 0d | Administrador de Proyectos | 1h | 163.93 |
| 35 | 2.2.1.2.5 | **Estimación** |  | 0.75d | 2016-05-16 09:30 | 2016-05-16 17:30 |  | 3d |  |  | 6h | 983.58 |
| 36 | 2.2.1.2.5.1 | Actualizar WBS/Calendario |  | 1h | 2016-05-16 09:30 | 2016-05-16 10:30 | 34 | 3d | 0d | Administrador de Proyectos | 1h | 163.93 |
| 37 | 2.2.1.2.5.2 | Diccionario del WBS |  | 4h | 2016-05-16 10:30 | 2016-05-16 16:30 | 36 | 3d | 0d | Administrador de Proyectos | 4h | 655.72 |
| 38 | 2.2.1.2.5.3 | Costos |  | 1h | 2016-05-16 16:30 | 2016-05-16 17:30 | 37 | 3d | 0d | Administrador de Proyectos | 1h | 163.93 |
| 39 | 2.2.1.2.6 | **Riesgos** |  | 1.5d | 2016-05-16 17:30 | 2016-05-18 11:30 |  | 3d |  |  | 24h | 4,345.2 |
| 40 | 2.2.1.2.6.1 | Identificación de riesgos |  | 6h | 2016-05-16 17:30 | 2016-05-17 15:30 | 38 | 3d | 0d | Líder; Analista | 12h | 2,172.6 |
| 41 | 2.2.1.2.6.2 | Asignacion de prioridades |  | 2h | 2016-05-17 15:30 | 2016-05-17 17:30 | 40 | 3d | 0d | Analista; Líder | 4h | 724.2 |
| 42 | 2.2.1.2.6.3 | Plan de mitigación y contingencia |  | 4h | 2016-05-17 17:30 | 2016-05-18 11:30 | 41 | 3d | 0d | Líder; Analista | 8h | 1,448.4 |
| 43 | 2.2.1.2.7 | **Aseguramiento de la calidad** |  | 3.69d | 2016-05-18 09:00 | 2016-05-23 16:30 |  |  |  |  | 5h | 535.72 |
| 44 | 2.2.1.2.7.1 | Plan de gestión de la configuración |  | 2h | 2016-05-18 11:30 | 2016-05-18 15:30 | 42 | 3d | 0d | Administrador de la Configuración; Asegurador de la Calidad | 4h | 429.18 |
| 45 | 2.2.1.2.7.2 | Junta de arranque de construcción |  | 1h | 2016-05-18 15:30 | 2016-05-18 16:30 | 44 | 3d | 0d | Asegurador de la Calidad | 1h | 106.54 |
| 46 | 2.2.1.2.7.3 | Entrega del plan del proyecto actualizado,matriz de comunicación, diccionario WBS,Identificacion de riesgos,Plan de mitigación y contingencia, Plan de gestion de la configuración, Junta de arranque de construcción | milestone | 0d | 2016-05-18 09:00 | 2016-05-18 09:00 |  | 3.69d |  |  |  |  |
| 47 | 2.2.1.3 | **Diseño** |  | 12.31d | 2016-05-02 09:00 | 2016-05-23 11:30 |  | 40.69d |  |  | 21h | 1,945.44 |
| 48 | 2.2.1.3.1 | Definición de la arquitectura |  | 2h | 2016-05-18 16:30 | 2016-05-18 18:30 | 45 | 31d | 0d | Diseñador | 2h | 185.28 |
| 49 | 2.2.1.3.2 | Diagrama de caso de uso |  | 4h | 2016-05-18 18:30 | 2016-05-19 12:30 | 48 | 31d | 0d | Diseñador | 4h | 370.56 |
| 50 | 2.2.1.3.3 | Diagrama de secuencia |  | 2h | 2016-05-19 12:30 | 2016-05-19 16:30 | 49 | 31d | 0d | Diseñador | 2h | 185.28 |
| 51 | 2.2.1.3.4 | Diagrama de clases |  | 1h | 2016-05-19 16:30 | 2016-05-19 17:30 | 50 | 31d | 0d | Diseñador | 1h | 92.64 |
| 52 | 2.2.1.3.5 | Diagrama de componentes |  | 1h | 2016-05-19 17:30 | 2016-05-19 18:30 | 51 | 31d | 0d | Diseñador | 1h | 92.64 |
| 53 | 2.2.1.3.6 | Diagrama de despliegue |  | 2h | 2016-05-19 18:30 | 2016-05-20 10:30 | 52 | 31d | 0d | Diseñador | 2h | 185.28 |
| 54 | 2.2.1.3.7 | Mapa de navegación |  | 1h | 2016-05-20 10:30 | 2016-05-20 11:30 | 53 | 31d | 0d | Diseñador | 1h | 92.64 |
| 55 | 2.2.1.3.8 | Maquetación (bocetos) |  | 6h | 2016-05-20 11:30 | 2016-05-23 09:30 | 54 | 31d | 0d | Diseñador | 6h | 555.84 |

Notes:
- 31: En esta actividad se define el tipo de ciclo de vida con el cual se estará trabajando durante el desarrollo del proyecto, este definirá las etapas y el orden de seguimiento de las mismas.
- 32: Lo que se llevará a cabo en esta actividad será el establecimiento de normas y políticas que regirán orden y disciplina durante el desarrollo del proyecto.
- 33: Se actualizará el pla del proyecto.
- 34: Se actualizará la matriz de comunicación.
- 49: Se diseñan los diagramas de casos de uso donde se realiza la relación entre el sistema y el cliente.
- 50: Es la línea de comunicación entre el usuario y el sistema de flujo alternativo se hace atreves de mensajes.
- 51: Se diseñan los diagramas de clases, en las cuales se determinaran sus atributos y métodos.
- 52: Todo lo que contiene la aplicación, se define la interacción entre los paquetes.
- 53: Se utiliza para modelar el hardware utilizado en las implementaciones de sistemas y las relaciones entre sus componentes
- 54: Se realiza el diseño del mapa de navegación de nuestro sitio, es decir es la estructura que tendrá, de tal manera que a nuestros clientes les sea fácil navegar en nuestro sitio web.
- 55: Son los bocetos que serán diseñados para la aplicación el back-end y el frond-end

| ID | WBS | Task | Type | Duration | Start | Finish | Predecessors | Total slack | Free slack | Resources | Work | Cost |
| --- | --- | --- | --- | --- | --- | --- | --- | --- | --- | --- | --- | --- |
| 56 | 2.2.1.3.9 | **Diseñar los diagramas de la BD** |  | 12.31d | 2016-05-02 09:00 | 2016-05-23 11:30 |  | 43.06d |  |  | 2h | 185.28 |
| 57 | 2.2.1.3.9.1 | Diagrama E-R |  | 1h | 2016-05-23 09:30 | 2016-05-23 10:30 | 55 | 31d | 0d | Diseñador | 1h | 92.64 |
| 58 | 2.2.1.3.9.2 | Diagrama Relacional |  | 1h | 2016-05-23 10:30 | 2016-05-23 11:30 | 57 | 31d | 0d | Diseñador | 1h | 92.64 |
| 59 | 2.2.1.3.9.3 | Definición de la arquitectura, diagramas UML, mapa de navegación y bocetos, Entrega de diagramas de la base de datos | milestone | 0d | 2016-05-02 09:00 | 2016-05-02 09:00 |  | 106d |  |  |  |  |
| 60 | 2.2.1.4 | **Codificación** |  | 15.81d | 2016-05-23 11:30 | 2016-06-14 10:00 |  | 31d |  |  | 126.5h | 13,156 |
| 61 | 2.2.1.4.1 | Codificación de la base de datos |  | 3h | 2016-05-23 11:30 | 2016-05-23 16:30 | 57, 58 | 31d | 0d | Programador | 3h | 312 |
| 62 | 2.2.1.4.2 | **Módulo Usuario** |  | 1.56d | 2016-05-23 16:30 | 2016-05-25 11:00 |  | 31d |  |  | 12.5h | 1,300 |
| 63 | 2.2.1.4.2.1 | Interfaz |  | 1h | 2016-05-23 16:30 | 2016-05-23 17:30 | 61 | 31d | 0d | Programador | 1h | 104 |
| 64 | 2.2.1.4.2.2 | Clases de usuario |  | 6h | 2016-05-23 17:30 | 2016-05-24 15:30 | 63 | 31d | 0d | Programador | 6h | 624 |
| 65 | 2.2.1.4.2.3 | Conexión de la base de datos |  | 0.5h | 2016-05-24 15:30 | 2016-05-24 16:00 | 64 | 31d | 0d | Programador | 0.5h | 52 |
| 66 | 2.2.1.4.2.4 | Alta de usuarios |  | 0.5h | 2016-05-24 16:00 | 2016-05-24 16:30 | 65 | 31d | 0d | Programador | 0.5h | 52 |
| 67 | 2.2.1.4.2.5 | Baja de usuarios |  | 0.5h | 2016-05-24 16:30 | 2016-05-24 17:00 | 66 | 31d | 0d | Programador | 0.5h | 52 |
| 68 | 2.2.1.4.2.6 | Actualizacion de usuarios |  | 1h | 2016-05-24 17:00 | 2016-05-24 18:00 | 67 | 31d | 0d | Programador | 1h | 104 |
| 69 | 2.2.1.4.2.7 | Consultas de usuarios |  | 1h | 2016-05-24 18:00 | 2016-05-24 19:00 | 68 | 31d | 0d | Programador | 1h | 104 |
| 70 | 2.2.1.4.2.8 | Reportes de usuarios |  | 2h | 2016-05-25 09:00 | 2016-05-25 11:00 | 69 | 31d | 0d | Programador | 2h | 208 |
| 71 | 2.2.1.4.3 | **Módulo viajes** |  | 2.31d | 2016-05-25 11:00 | 2016-05-27 15:30 |  | 31d |  |  | 18.5h | 1,924 |
| 72 | 2.2.1.4.3.1 | Interfaz |  | 1h | 2016-05-25 11:00 | 2016-05-25 12:00 | 70 | 31d | 0d | Programador | 1h | 104 |
| 73 | 2.2.1.4.3.2 | Clases de viajes |  | 6h | 2016-05-25 12:00 | 2016-05-26 10:00 | 72 | 31d | 0d | Programador | 6h | 624 |
| 74 | 2.2.1.4.3.3 | Alta de viajes |  | 0.5h | 2016-05-26 10:00 | 2016-05-26 10:30 | 73 | 31d | 0d | Programador | 0.5h | 52 |
| 75 | 2.2.1.4.3.4 | Baja de viajes |  | 0.5d | 2016-05-26 10:30 | 2016-05-26 16:30 | 74 | 31d | 0d | Programador | 4h | 416 |
| 76 | 2.2.1.4.3.5 | Actualización de viajes |  | 0.5d | 2016-05-26 16:30 | 2016-05-27 10:30 | 75 | 31d | 0d | Programador | 4h | 416 |
| 77 | 2.2.1.4.3.6 | Consultas de viajes |  | 1h | 2016-05-27 10:30 | 2016-05-27 11:30 | 76 | 31d | 0d | Programador | 1h | 104 |
| 78 | 2.2.1.4.3.7 | Reportes de viajes |  | 2h | 2016-05-27 11:30 | 2016-05-27 15:30 | 77 | 31d | 0d | Programador | 2h | 208 |
| 79 | 2.2.1.4.4 | **Módulo clientes** |  | 2.31d | 2016-05-27 15:30 | 2016-05-31 18:00 |  | 31d |  |  | 18.5h | 1,924 |
| 80 | 2.2.1.4.4.1 | Interfaz |  | 1h | 2016-05-27 15:30 | 2016-05-27 16:30 | 78 | 31d | 0d | Programador | 1h | 104 |
| 81 | 2.2.1.4.4.2 | Clases clientes |  | 6h | 2016-05-27 16:30 | 2016-05-30 12:30 | 80 | 31d | 0d | Programador | 6h | 624 |
| 82 | 2.2.1.4.4.3 | Alta clientes |  | 0.5h | 2016-05-30 12:30 | 2016-05-30 13:00 | 81 | 31d | 0d | Programador | 0.5h | 52 |
| 83 | 2.2.1.4.4.4 | Baja clientes |  | 0.5d | 2016-05-30 15:00 | 2016-05-30 19:00 | 82 | 31d | 0d | Programador | 4h | 416 |
| 84 | 2.2.1.4.4.5 | Actualización clientes |  | 0.5d | 2016-05-31 09:00 | 2016-05-31 13:00 | 83 | 31d | 0d | Programador | 4h | 416 |
| 85 | 2.2.1.4.4.6 | Consultas clientes |  | 1h | 2016-05-31 15:00 | 2016-05-31 16:00 | 84 | 31d | 0d | Programador | 1h | 104 |
| 86 | 2.2.1.4.4.7 | Reportes de los clientes |  | 2h | 2016-05-31 16:00 | 2016-05-31 18:00 | 85 | 31d | 0d | Programador | 2h | 208 |

Notes:
- 57: El diagrama entidad relación se elabora para el diseño de la base de datos para identificar las entidades y atributos de una base de datos.
- 58: El diagrama relacional es un esquema para ver la relación entre tablas como las llaves foráneas, cardinalidad.
- 61: Se diseña la base de datos de acuerdo a los diagramas establecidos
- 63: Se diseño la interfaz del módulo usuario
- 64: Se codifica la clase usuario
- 65: Se hace la conexión a la base de datos
- 66: Se realizan las altas de los usuarios
- 67: Se realiza la baja de los usuarios
- 68: Se realiza la actualización de los uasuarios
- 69: Se realiza las consultas necesarias de este módulo
- 70: Al finalizar este módulo se hará un reporte de este módulo
- 72: Se diseño la interfaz del módulo usuario
- 73: Se codifica la clase viajes
- 74: Se realizan las altas de los viajes
- 75: Se realiza la baja de los viajes
- 76: Se realiza la actualización de los viajes
- 77: Se realiza las consultas necesarias de este módulo
- 78: Al finalizar este módulo se hará un reporte de este módulo
- 80: Se diseño la interfaz del módulo clientes
- 81: Se codifica la clase clientes
- 82: Se realizan las altas de los viajes
- 83: Se realiza la baja de los clientes
- 84: Se realiza la actualización de los clientes
- 85: Se realiza las consultas necesarias de este módulo
- 86: Al finalizar este módulo se hará un reporte de este módulo

| ID | WBS | Task | Duration | Start | Finish | Predecessors | Total slack | Free slack | Resources | Work | Cost |
| --- | --- | --- | --- | --- | --- | --- | --- | --- | --- | --- | --- |
| 87 | 2.2.1.4.5 | **Módulo hotel** | 2.31d | 2016-05-31 18:00 | 2016-06-03 10:30 |  | 31d |  |  | 18.5h | 1,924 |
| 88 | 2.2.1.4.5.1 | Interfaz | 1h | 2016-05-31 18:00 | 2016-05-31 19:00 | 86 | 31d | 0d | Programador | 1h | 104 |
| 89 | 2.2.1.4.5.2 | Clases hotel | 6h | 2016-06-01 09:00 | 2016-06-01 17:00 | 88 | 31d | 0d | Programador | 6h | 624 |
| 90 | 2.2.1.4.5.3 | Alta de hotel | 0.5h | 2016-06-01 17:00 | 2016-06-01 17:30 | 89 | 31d | 0d | Programador | 0.5h | 52 |
| 91 | 2.2.1.4.5.4 | Baja de viajes | 0.5d | 2016-06-01 17:30 | 2016-06-02 11:30 | 90 | 31d | 0d | Programador | 4h | 416 |
| 92 | 2.2.1.4.5.5 | Actualización hotel | 0.5d | 2016-06-02 11:30 | 2016-06-02 17:30 | 91 | 31d | 0d | Programador | 4h | 416 |
| 93 | 2.2.1.4.5.6 | Consultas hotel | 1h | 2016-06-02 17:30 | 2016-06-02 18:30 | 92 | 31d | 0d | Programador | 1h | 104 |
| 94 | 2.2.1.4.5.7 | Reportes hotel | 2h | 2016-06-02 18:30 | 2016-06-03 10:30 | 93 | 31d | 0d | Programador | 2h | 208 |
| 95 | 2.2.1.4.6 | **Módulo transporte** | 2.31d | 2016-06-03 10:30 | 2016-06-07 13:00 |  | 31d |  |  | 18.5h | 1,924 |
| 96 | 2.2.1.4.6.1 | Interfaz | 1h | 2016-06-03 10:30 | 2016-06-03 11:30 | 94 | 31d | 0d | Programador | 1h | 104 |
| 97 | 2.2.1.4.6.2 | Clase transporte | 6h | 2016-06-03 11:30 | 2016-06-06 09:30 | 96 | 31d | 0d | Programador | 6h | 624 |
| 98 | 2.2.1.4.6.3 | Alta transporte | 0.5h | 2016-06-06 09:30 | 2016-06-06 10:00 | 97 | 31d | 0d | Programador | 0.5h | 52 |
| 99 | 2.2.1.4.6.4 | Baja transporte | 0.5d | 2016-06-06 10:00 | 2016-06-06 16:00 | 98 | 31d | 0d | Programador | 4h | 416 |
| 100 | 2.2.1.4.6.5 | Actualización transporte | 0.5d | 2016-06-06 16:00 | 2016-06-07 10:00 | 99 | 31d | 0d | Programador | 4h | 416 |
| 101 | 2.2.1.4.6.6 | Consultas transporte | 1h | 2016-06-07 10:00 | 2016-06-07 11:00 | 100 | 31d | 0d | Programador | 1h | 104 |
| 102 | 2.2.1.4.6.7 | Reportes transporte | 2h | 2016-06-07 11:00 | 2016-06-07 13:00 | 101 | 31d | 0d | Programador | 2h | 208 |
| 103 | 2.2.1.4.7 | **Módulo procedencia-destino** | 2.31d | 2016-06-07 15:00 | 2016-06-09 17:30 |  | 31d |  |  | 18.5h | 1,924 |
| 104 | 2.2.1.4.7.1 | Interfaz | 1h | 2016-06-07 15:00 | 2016-06-07 16:00 | 102 | 31d | 0d | Programador | 1h | 104 |
| 105 | 2.2.1.4.7.2 | Clases procedencia-destino | 6h | 2016-06-07 16:00 | 2016-06-08 12:00 | 104 | 31d | 0d | Programador | 6h | 624 |
| 106 | 2.2.1.4.7.3 | Alta procedencia-destino | 0.5h | 2016-06-08 12:00 | 2016-06-08 12:30 | 105 | 31d | 0d | Programador | 0.5h | 52 |
| 107 | 2.2.1.4.7.4 | Baja procedencia-destino | 0.5d | 2016-06-08 12:30 | 2016-06-08 18:30 | 106 | 31d | 0d | Programador | 4h | 416 |
| 108 | 2.2.1.4.7.5 | Actualización procedencia-destino | 0.5d | 2016-06-08 18:30 | 2016-06-09 12:30 | 107 | 31d | 0d | Programador | 4h | 416 |
| 109 | 2.2.1.4.7.6 | Consultas procedencia-destino | 1h | 2016-06-09 12:30 | 2016-06-09 15:30 | 108 | 31d | 0d | Programador | 1h | 104 |
| 110 | 2.2.1.4.7.7 | Reportes procedencia-destino | 2h | 2016-06-09 15:30 | 2016-06-09 17:30 | 109 | 31d | 0d | Programador | 2h | 208 |

Notes:
- 88: Se diseño la interfaz del módulo hotel
- 89: Se codifica la clase hotel
- 90: Se realizan las altas del hotel
- 91: Se realiza la baja del hotel
- 92: Se realiza la actualización del hotel
- 93: Se realiza las consultas necesarias de este módulo
- 94: Al finalizar este módulo se hará un reporte de este módulo
- 96: Se diseño la interfaz del módulo transporte
- 97: Se codifica la clase transporte
- 98: Se realizan las altas del transporte
- 99: Se realiza la baja del transporte
- 100: Se realiza la actualización del transporte
- 101: Se realiza las consultas necesarias de este módulo
- 102: Al finalizar este módulo se hará un reporte de este módulo
- 104: Se diseño la interfaz del módulo procedencia-destino
- 105: Se codifica la clase procedencia-destino
- 106: Se realizan las altas de procedencia-destino
- 107: Se realiza la baja de procedencia-destino
- 108: Se realiza la actualización de procedencia-destino
- 109: Se realiza las consultas necesarias de este módulo
- 110: Al finalizar este módulo se hará un reporte de este módulo

| ID | WBS | Task | Duration | Start | Finish | Predecessors | Total slack | Free slack | Resources | Work | Cost |
| --- | --- | --- | --- | --- | --- | --- | --- | --- | --- | --- | --- |
| 111 | 2.2.1.4.8 | **Módulo Registro paquetes** | 2.31d | 2016-06-09 17:30 | 2016-06-14 10:00 |  | 31d |  |  | 18.5h | 1,924 |
| 112 | 2.2.1.4.8.1 | Interfaz | 1h | 2016-06-09 17:30 | 2016-06-09 18:30 | 110 | 31d | 0d | Programador | 1h | 104 |
| 113 | 2.2.1.4.8.2 | Clases Registro paquetes | 6h | 2016-06-09 18:30 | 2016-06-10 16:30 | 112 | 31d | 0d | Programador | 6h | 624 |
| 114 | 2.2.1.4.8.3 | Alta Registro paquetes | 0.5h | 2016-06-10 16:30 | 2016-06-10 17:00 | 113 | 31d | 0d | Programador | 0.5h | 52 |
| 115 | 2.2.1.4.8.4 | Baja Registro paquetes | 0.5d | 2016-06-10 17:00 | 2016-06-13 11:00 | 114 | 31d | 0d | Programador | 4h | 416 |
| 116 | 2.2.1.4.8.5 | Actualización Registro paquetes | 0.5d | 2016-06-13 11:00 | 2016-06-13 17:00 | 115 | 31d | 0d | Programador | 4h | 416 |
| 117 | 2.2.1.4.8.6 | Consultas Registro paquetes | 1h | 2016-06-13 17:00 | 2016-06-13 18:00 | 116 | 31d | 0d | Programador | 1h | 104 |
| 118 | 2.2.1.4.8.7 | Reportes Registro paquetes | 2h | 2016-06-13 18:00 | 2016-06-14 10:00 | 117 | 31d | 0d | Programador | 2h | 208 |
| 119 | 2.2.1.5 | **Pruebas** | 45d | 2016-06-14 10:00 | 2016-08-31 10:00 |  | 0d |  |  | 112h | 12,250.56 |
| 120 | 2.2.1.5.1 | **Pruebas de caja blanca** | 45d | 2016-06-14 10:00 | 2016-08-31 10:00 |  | 0d |  |  | 112h | 12,250.56 |
| 121 | 2.2.1.5.1.1 | **Módulo Usuario** | 2d | 2016-06-14 10:00 | 2016-06-16 10:00 |  | 31d |  |  | 16h | 1,750.08 |
| 122 | 2.2.1.5.1.1.1 | Pruebas unitarias | 1d | 2016-06-14 10:00 | 2016-06-15 10:00 | 118 | 31d | 0d | Tester | 8h | 875.04 |
| 123 | 2.2.1.5.1.1.2 | Pruebas de módulo | 1d | 2016-06-15 10:00 | 2016-06-16 10:00 | 122 | 31d | 0d | Tester | 8h | 875.04 |
| 124 | 2.2.1.5.1.2 | **Módulo viajes** | 2d | 2016-06-16 10:00 | 2016-06-20 10:00 |  | 31d |  |  | 16h | 1,750.08 |
| 125 | 2.2.1.5.1.2.1 | Pruebas unitarias | 1d | 2016-06-16 10:00 | 2016-06-17 10:00 | 123 | 31d | 0d | Tester | 8h | 875.04 |
| 126 | 2.2.1.5.1.2.2 | Pruebas de módulo | 1d | 2016-06-17 10:00 | 2016-06-20 10:00 | 125 | 31d | 0d | Tester | 8h | 875.04 |
| 127 | 2.2.1.5.1.3 | **Módulo clientes** | 2d | 2016-06-20 10:00 | 2016-06-22 10:00 |  | 31d |  |  | 16h | 1,750.08 |
| 128 | 2.2.1.5.1.3.1 | Pruebas unitarias | 1d | 2016-06-20 10:00 | 2016-06-21 10:00 | 126 | 31d | 0d | Tester | 8h | 875.04 |
| 129 | 2.2.1.5.1.3.2 | Pruebas de módulo | 1d | 2016-06-21 10:00 | 2016-06-22 10:00 | 128 | 31d | 0d | Tester | 8h | 875.04 |
| 130 | 2.2.1.5.1.4 | **Módulo hotel** | 2d | 2016-06-22 10:00 | 2016-06-24 10:00 |  | 31d |  |  | 16h | 1,750.08 |
| 131 | 2.2.1.5.1.4.1 | Pruebas unitarias | 1d | 2016-06-22 10:00 | 2016-06-23 10:00 | 129 | 31d | 0d | Tester | 8h | 875.04 |
| 132 | 2.2.1.5.1.4.2 | Pruebas de módulo | 1d | 2016-06-23 10:00 | 2016-06-24 10:00 | 131 | 31d | 0d | Tester | 8h | 875.04 |
| 133 | 2.2.1.5.1.5 | **Módulo transporte** | 2d | 2016-06-24 10:00 | 2016-06-28 10:00 |  | 31d |  |  | 16h | 1,750.08 |
| 134 | 2.2.1.5.1.5.1 | Pruebas unitarias | 1d | 2016-06-24 10:00 | 2016-06-27 10:00 | 132 | 31d | 0d | Tester | 8h | 875.04 |
| 135 | 2.2.1.5.1.5.2 | Pruebas de módulo | 1d | 2016-06-27 10:00 | 2016-06-28 10:00 | 134 | 31d | 0d | Tester | 8h | 875.04 |

Notes:
- 112: Se diseño la interfaz del módulo Registro paquetes
- 113: Se codifica la clase Registro paquetes
- 114: Se realizan las altas de Registro paquetes
- 115: Se realiza la baja de Registro paquetes
- 116: Se realiza la actualización de Registro paquetes
- 117: Se realiza las consultas necesarias de este módulo
- 118: Al finalizar este módulo se hará un reporte de este módulo
- 122: Es una forma de probar el correcto funcionamiento de un módulo de código.
- 123: Se realizan pruebas de funcionalidad para este módulo.
- 125: Es una forma de probar el correcto funcionamiento de un módulo de código.
- 126: Se realizan pruebas de funcionalidad para este módulo.
- 128: Es una forma de probar el correcto funcionamiento de un módulo de código.
- 129: Se realizan pruebas de funcionalidad para este módulo.
- 131: Es una forma de probar el correcto funcionamiento de un módulo de código.
- 132: Se realizan pruebas de funcionalidad para este módulo.
- 134: Es una forma de probar el correcto funcionamiento de un módulo de código.
- 135: Se realizan pruebas de funcionalidad para este módulo.

| ID | WBS | Task | Type | Duration | Start | Finish | Predecessors | Total slack | Free slack | Constraint | Resources | Work | Cost |
| --- | --- | --- | --- | --- | --- | --- | --- | --- | --- | --- | --- | --- | --- |
| 136 | 2.2.1.5.1.6 | **Módulo procedencia-destino** |  | 2d | 2016-06-28 10:00 | 2016-06-30 10:00 |  | 31d |  |  |  | 16h | 1,750.08 |
| 137 | 2.2.1.5.1.6.1 | Pruebas unitarias |  | 1d | 2016-06-28 10:00 | 2016-06-29 10:00 | 135 | 31d | 0d |  | Tester | 8h | 875.04 |
| 138 | 2.2.1.5.1.6.2 | Pruebas de módulo |  | 1d | 2016-06-29 10:00 | 2016-06-30 10:00 | 137 | 31d | 0d |  | Tester | 8h | 875.04 |
| 139 | 2.2.1.5.1.7 | **Módulo Registro paquetes** |  | 33.12d | 2016-06-30 09:00 | 2016-08-31 10:00 |  |  |  |  |  | 16h | 1,750.08 |
| 140 | 2.2.1.5.1.7.1 | Pruebas unitarias |  | 1d | 2016-06-30 10:00 | 2016-07-01 10:00 | 138 | 31d | 0d |  | Tester | 8h | 875.04 |
| 141 | 2.2.1.5.1.7.2 | Pruebas de módulo |  | 1d | 2016-07-01 10:00 | 2016-07-05 10:00 | 140 | 31d | 0d |  | Tester | 8h | 875.04 |
| 142 | 2.2.1.5.1.7.3 | Entrega de documentos de Pruebas | milestone | 0d | 2016-06-30 09:00 | 2016-06-30 09:00 |  | 33.12d |  |  |  |  |  |
| 143 | 2.2.1.6 | **Implementación** |  | 46.12d | 2016-06-30 09:00 | 2016-09-19 10:00 |  |  |  |  |  | 72h | 9,849.92 |
| 144 | 2.2.1.6.1 | Evaluación de hosting |  | 1d | 2016-07-05 10:00 | 2016-07-06 10:00 | 141 | 39d | 0d |  | Programador | 8h | 832 |
| 145 | 2.2.1.6.2 | Implementar el sitio en hosting |  | 1d | 2016-07-06 10:00 | 2016-07-07 10:00 | 144 | 39d | 0d |  | Programador | 8h | 832 |
| 146 | 2.2.1.6.3 | Manual de usuario |  | 1d | 2016-07-07 10:00 | 2016-07-08 10:00 | 145 | 39d | 0d |  | Programador | 8h | 832 |
| 147 | 2.2.1.6.4 | Entrega de manual de usuario | milestone | 0d | 2016-06-30 09:00 | 2016-06-30 09:00 |  | 46.12d |  |  |  |  |  |
| 148 | 2.2.1.6.5 | **Pruebas de caja blanca** |  | 2d | 2016-07-08 10:00 | 2016-07-12 10:00 |  | 39d |  |  |  | 48h | 7,353.92 |
| 149 | 2.2.1.6.5.1 | Pruebas de rendimiento |  | 1d | 2016-07-08 10:00 | 2016-07-11 10:00 | 146 | 39d | 0d |  | Asegurador de la Calidad; Líder; Tester | 24h | 3,676.96 |
| 150 | 2.2.1.6.5.2 | Pruebas de sistema |  | 1d | 2016-07-11 10:00 | 2016-07-12 10:00 | 149 | 39d | 0d |  | Asegurador de la Calidad; Líder; Tester | 24h | 3,676.96 |
| 151 | 2.2.1.7 | **Cierre de proyecto** |  | 59d | 2016-07-12 09:00 | 2016-10-14 19:00 |  |  |  |  |  | 256h | 45,999.36 |
| 152 | 2.2.1.7.1 | Carta de cierre de proyecto |  | 1d | 2016-07-12 10:00 | 2016-07-13 10:00 | 150 | 46.88d | 0d |  | Administrador de Proyectos; Líder | 16h | 3,261.04 |
| 153 | 2.2.1.7.2 | Acta de cierre de proyecto |  | 1d | 2016-07-13 10:00 | 2016-07-14 10:00 | 152 | 46.88d | 0d |  | Administrador de Proyectos; Líder | 16h | 3,261.04 |
| 154 | 2.2.1.7.3 | Evaluacion de desempeño |  | 2d | 2016-07-14 10:00 | 2016-08-01 10:00 | 153 | 46.88d | 0d |  | Administrador de la Configuración; Administrador de Proyectos; Asegurador de la Calidad; Líder | 64h | 9,955.52 |
| 155 | 2.2.1.7.4 | Juntas de lecciones aprendidas |  | 2d | 2016-08-01 10:00 | 2016-08-03 10:00 | 154 | 46.88d | 0d |  | Administrador de Proyectos; Líder | 32h | 6,522.08 |
| 156 | 2.2.1.7.5 | Revisión de adherencia de procesos |  | 2d | 2016-08-03 10:00 | 2016-08-05 10:00 | 155 | 46.88d | 0d |  | Administrador de la Configuración; Administrador de Proyectos; Asegurador de la Calidad; Líder | 64h | 9,955.52 |
| 157 | 2.2.1.7.6 | Liberaciones de recursos |  | 2d | 2016-08-05 10:00 | 2016-08-09 10:00 | 156 | 46.88d | 0d |  | Administrador de Proyectos; Líder | 32h | 6,522.08 |
| 158 | 2.2.1.7.7 | Informe final (cierre) |  | 2d | 2016-08-09 10:00 | 2016-08-11 10:00 | 157 | 46.88d |  |  | Administrador de Proyectos; Líder | 32h | 6,522.08 |
| 159 | 2.2.1.7.8 | Carta de cierre de proyecto, Acta de cierre de proyecto, Lecciones aprendidas, Revision de adherencia de procesos y Informe final | milestone | 0d | 2016-07-12 19:00 | 2016-07-12 19:00 |  | 58d |  | finish no earlier than 2016-07-12 19:00 |  |  |  |

Notes:
- 137: Es una forma de probar el correcto funcionamiento de un módulo de código.
- 138: Se realizan pruebas de funcionalidad para este módulo.
- 140: Es una forma de probar el correcto funcionamiento de un módulo de código.
- 141: Se realizan pruebas de funcionalidad para este módulo.
- 146: Se realiza para que el encargado de los registros de la base de datos tenga conocimiento del funcionamiento de la base de datos.
- 149: Se somete el sistema o el proyecto finalizado a varias pruebas de rendimiento.
- 150: Se somete el sistema o el proyecto finalizado a varias pruebas de sistema.
- 152: Es donde se establece que el proyecto ha culminado.
- 153: Es donde se establece que el proyecto ha culminado.
- 154: Se evalua el desempeño de los participantes del proyecto
- 155: El propósito de esta plantilla es ayudar al equipo del proyecto compartir conocimientos obtenidos de la experiencia de modo que toda la organización se puede beneficiar.
- 156: Son las revisiones de todos los procesos aplicados en el software.
- 157: Se liberan a todos los recursos humanos.
- 158: Se establececomo concluyo el proyecto.

| ID | WBS | Task | Type | Duration | Start | Finish | Total slack | Constraint | Resources |
| --- | --- | --- | --- | --- | --- | --- | --- | --- | --- |
| 161 | 2.2.1.7.9 | **Revisión** |  | 13d | 2016-07-12 09:00 | 2016-08-12 09:00 | 46d |  |  |
| 162 | 2.2.1.7.9.1 | Revisión 1 | milestone | 0d | 2016-07-12 09:00 | 2016-07-12 09:00 | 59d | start no earlier than 2016-05-06 09:00 | Líder |
| 163 | 2.2.1.7.9.2 | Revisión 2 | milestone | 0d | 2016-07-12 09:00 | 2016-07-12 09:00 | 59d | start no earlier than 2016-05-13 09:00 | Líder |
| 164 | 2.2.1.7.9.3 | Revisión 3 | milestone | 0d | 2016-07-12 09:00 | 2016-07-12 09:00 | 59d | start no earlier than 2016-05-20 09:00 | Líder |
| 165 | 2.2.1.7.9.4 | Revisión 4 | milestone | 0d | 2016-07-12 09:00 | 2016-07-12 09:00 | 59d | start no earlier than 2016-05-27 09:00 | Líder |
| 166 | 2.2.1.7.9.5 | Revisión 5 | milestone | 0d | 2016-07-12 09:00 | 2016-07-12 09:00 | 59d | start no earlier than 2016-06-03 09:00 | Líder |
| 167 | 2.2.1.7.9.6 | Revisión 6 | milestone | 0d | 2016-07-12 09:00 | 2016-07-12 09:00 | 59d | start no earlier than 2016-06-10 09:00 | Líder |
| 168 | 2.2.1.7.9.7 | Revisión 7 | milestone | 0d | 2016-07-12 09:00 | 2016-07-12 09:00 | 59d | start no earlier than 2016-06-17 09:00 | Líder |
| 169 | 2.2.1.7.9.8 | Revisión 8 | milestone | 0d | 2016-07-12 09:00 | 2016-07-12 09:00 | 59d | start no earlier than 2016-06-24 09:00 | Líder |
| 170 | 2.2.1.7.9.9 | Revisión 9 | milestone | 0d | 2016-07-12 09:00 | 2016-07-12 09:00 | 59d | start no earlier than 2016-07-01 09:00 | Líder |
| 171 | 2.2.1.7.9.10 | Revisión 10 | milestone | 0d | 2016-07-12 09:00 | 2016-07-12 09:00 | 59d | start no earlier than 2016-07-08 09:00 | Líder |
| 172 | 2.2.1.7.9.11 | Revisión 11 | milestone | 0d | 2016-07-15 09:00 | 2016-07-15 09:00 | 10d | start no earlier than 2016-07-15 09:00 | Líder |
| 173 | 2.2.1.7.9.12 | Revisión 12 | milestone | 0d | 2016-07-22 09:00 | 2016-07-22 09:00 | 9d | start no earlier than 2016-07-22 09:00 | Líder |
| 174 | 2.2.1.7.9.13 | Revisión 13 | milestone | 0d | 2016-07-29 09:00 | 2016-07-29 09:00 | 9d | start no earlier than 2016-07-29 09:00 | Líder |
| 175 | 2.2.1.7.9.14 | Revisión 14 | milestone | 0d | 2016-08-05 09:00 | 2016-08-05 09:00 | 5d | start no earlier than 2016-08-05 09:00 | Líder |
| 176 | 2.2.1.7.9.15 | Revisión 15 | milestone | 0d | 2016-08-12 09:00 | 2016-08-12 09:00 | 46d | start no earlier than 2016-08-12 09:00 | Líder |
